# 13XS487-Technical

How a schedule from MS Project changed from version to version. A marks actual dates.

## Version 1 (saved 2014-06-06)

Note of the change: update to project schedule

| ID | WBS | Task | Duration | Start | Finish | Predecessors | Complete | Total float | Constraint |
| --- | --- | --- | --- | --- | --- | --- | --- | --- | --- |
| 1 |  | Start | 0h | 2013-10-18 A | 2013-10-18 |  | 99% | 8d | start no earlier than 2013-10-18 |
| 2 | 2 | **caGrid Architectural Support** | 240d | 2013-10-18 A | 2014-09-18 | 1 |  | 8d |  |
| 3 |  | caGrid Operations & Maintenance | 240d | 2013-10-18 A | 2014-09-18 | 1 |  | 8d |  |
| 4 | 3 | **caGrid Project Management** | 248d? | 2013-10-18 | 2014-09-30 |  |  | 0d |  |
| 5 |  | caGrid Project Management | 0d? | 2013-10-18 | 2013-10-18 |  |  | 0d | must start on 2013-10-18 |
| 6 |  | caGrid Project Management | 0d? | 2014-09-30 | 2014-09-30 |  |  | 0d | must finish on 2014-09-30 |
| 7 |  | Weekly Status Meeting | 248d | 2013-10-18 | 2014-09-30 |  |  | 0d | finish no earlier than 2014-09-30 |
| 8 |  | Monthly Status reports | 248d | 2013-10-18 | 2014-09-30 |  |  | 0d | start no earlier than 2013-10-18 |
| 9 |  | Project Summary Report | 22d | 2014-09-01 | 2014-09-30 |  |  | 0d | finish no earlier than 2014-09-30 |
| 10 | 4 | **caGrid 2.0** | 208d? | 2013-07-19 A | 2014-05-06 |  | 62% | 105d |  |
| 11 |  | Start | 0h | 2013-10-18 A | 2013-10-18 | 1 | 99% | 248d |  |
| 12 | 4.2 | **Documentation** | 158d? | 2013-07-19 A | 2014-02-25 A |  | 100% |  |  |
| 13 |  | Obtaining a SHA2 credential | 62d | 2013-07-22 A | 2013-10-15 A |  | 100% |  | finish no earlier than 2013-10-15 |
| 14 |  | Patching a caGrid 1.4 Distributions | 62d | 2013-07-22 A | 2013-10-15 A |  | 100% |  | finish no earlier than 2013-10-15 |
| 15 |  | Patching caGrid 1.x Services to Support SHA2 | 63d | 2013-07-19 A | 2013-10-15 A |  | 100% |  | finish no earlier than 2013-10-15 |
| 16 |  | Create a Trust Fabirc CA | 62d | 2013-07-22 A | 2013-10-15 A |  | 100% |  | finish no earlier than 2013-10-15 |
| 17 | 4.2.5 | **Administrator Guides** | 26d? | 2014-01-21 A | 2014-02-25 A |  | 100% |  |  |
| 18 |  | Dorian | 5d | 2014-01-21 A | 2014-01-27 A |  | 100% |  | finish no earlier than 2014-01-27 |
| 19 |  | Grid Trust Service (GTS) | 5d | 2014-01-28 A | 2014-02-03 A | 18 | 100% |  | finish no earlier than 2014-02-03 |
| 20 |  | Global Model Exchange (GME) | 5d | 2014-01-28 A | 2014-02-03 A |  | 100% |  | finish no earlier than 2014-02-03 |
| 21 |  | Support documentation on Wiki | 1d? | 2014-02-04 A | 2014-02-04 A | 20 | 100% |  | start no earlier than 2014-01-28 |
| 22 |  | Grid Grouper | 10d | 2014-02-05 A | 2014-02-18 A | 19, 21 | 100% |  | finish no earlier than 2014-02-10 |
| 23 |  | Credential Delegation Service (CDS) | 5d | 2014-02-19 A | 2014-02-25 A | 22 | 100% |  |  |
| 24 | 4.3 | **Deployment** | 142d | 2013-10-18 A | 2014-05-05 |  | 20% | 106d |  |
| 25 |  | Architecture Review Checklist | 4.75d | 2013-10-28 A | 2013-11-01 A | 11 | 100% |  |  |
| 26 |  | Deployment to NCI QA | 19.75d | 2013-10-21 A | 2013-11-15 A | 11 | 100% |  |  |
| 27 |  | Supporting QA Team | 70d | 2013-10-28 A | 2014-01-31 |  |  | 172d | start no earlier than 2013-10-28 |
| 28 | 4.3.4 | **QA Testing** | 43d | 2014-01-02 A | 2014-03-03 | 26 | 99% | 0d |  |
| 29 | 4.3.4.1 | **Iteration 1** | 5d | 2014-01-02 A | 2014-01-08 A |  | 100% |  |  |
| 30 |  | QA App Scan | 5d | 2014-01-02 A | 2014-01-08 A |  | 100% |  | start no earlier than 2014-01-02 |
| 31 |  | Iteration 2 | 5d | 2014-02-25 A | 2014-03-03 A | 29 | 100% |  | start no earlier than 2014-01-20 |
| 32 | 4.3.5 | **Training Grid** | 8d | 2013-10-18 A | 2013-10-29 A |  | 100% |  |  |
| 33 | 4.3.5.1 | **Iteration 1** | 8d | 2013-10-18 A | 2013-10-29 A |  | 100% |  |  |
| 34 |  | Start | 0d | 2013-10-18 A | 2013-10-18 A | 29 | 100% |  |  |
| 35 |  | Dorian | 1d | 2013-10-21 A | 2013-10-21 A | 34 | 100% |  |  |
| 36 |  | Master GTS | 1d | 2013-10-22 A | 2013-10-22 A | 34 | 100% |  |  |
| 37 |  | Slave GTS | 1d | 2013-10-23 A | 2013-10-23 A | 34 | 100% |  |  |
| 38 |  | Index | 1d | 2013-10-24 A | 2013-10-24 A | 34 | 100% |  |  |
| 39 |  | Grid Grouper | 1d | 2013-10-25 A | 2013-10-25 A | 34 | 100% |  |  |
| 40 |  | MMS | 1d | 2013-10-28 A | 2013-10-28 A | 34 | 100% |  |  |
| 41 |  | GME | 1d | 2013-10-29 A | 2013-10-29 A | 34 | 100% |  |  |
| 42 |  | End | 0d | 2013-10-29 A | 2013-10-29 A | 37, 38, 39, 35, 40, 36, 41 | 100% |  |  |
| 43 |  | QA report for stage deployment | 4d | 2014-03-04 A | 2014-03-07 | 31 | 75% | 122d | finish no earlier than 2014-02-07 |
| 44 |  | Review QA Report for Approval | 5d | 2014-04-02 A | 2014-04-08 | 43 |  | 105d |  |
| 45 |  | Deployment to NCI Stage | 5d | 2014-04-09 | 2014-04-15 | 44 |  | 105d |  |
| 46 |  | Stage App Scan | 3d | 2014-04-16 | 2014-04-18 | 45 |  | 105d |  |
| 47 |  | QA report for production deployment | 6d | 2014-04-21 | 2014-04-28 | 46 |  | 105d | finish no earlier than 2014-02-07 |
| 48 |  | Deployment to NCI Production | 5d | 2014-04-29 | 2014-05-05 | 44, 47 |  | 105d |  |
| 49 |  | Deployment Support | 21.3w | 2013-11-01 | 2014-04-01 | 25 |  | 130.75d | start no earlier than 2013-10-21 |
| 50 |  | Jenkins setup | 5d | 2014-02-21 A | 2014-02-27 A |  | 100% |  | start no earlier than 2014-02-21 |
| 51 |  | Release Support | 1d | 2014-05-06 | 2014-05-06 | 48 |  | 105d |  |
| 52 |  | End | 0h | 2014-05-05 | 2014-05-05 | 26, 48, 25, 28 |  | 106d | start no earlier than 2014-02-20 |
| 53 | 5 | **caGrid 2.1** | 195d | 2013-12-30 A | 2014-09-26 |  | 37% | 2d |  |
| 54 |  | Start | 0h | 2013-12-30 A | 2013-12-30 A |  | 100% |  |  |
| 55 | 5.2 | **Service Development** | 112d | 2013-12-30 A | 2014-06-03 |  | 82% | 71d |  |
| 56 |  | Start | 0h | 2013-12-30 A | 2013-12-30 A | 54 | 100% |  |  |
| 57 |  | SyncGTS | 13.2w | 2013-12-30 A | 2014-03-31 A | 56 | 100% |  | finish no earlier than 2014-03-31 |
| 58 |  | MMS Service | 12.8w | 2014-01-01 A | 2014-03-31 A |  | 100% |  | finish no earlier than 2014-03-31 |
| 59 |  | Index Service | 10w | 2014-03-24 A | 2014-05-30 |  | 40% | 73d | start no earlier than 2014-03-24 |
| 60 |  | Authentication Service | 5w | 2014-04-30 A | 2014-06-03 |  | 70% | 71d | finish no earlier than 2014-05-15 |
| 61 |  | End | 0h | 2014-06-03 | 2014-06-03 | 60, 58, 57, 59 |  | 71d |  |
| 62 | 5.3 | **Cookbooks** | 155d | 2014-02-24 A | 2014-09-26 |  | 13% | 2d |  |
| 63 |  | Define cookbook scope | 10d | 2014-02-24 A | 2014-03-07 A |  | 100% |  | start no earlier than 2014-02-24 |
| 64 |  | Developing Maven Archtypes project | 42d | 2014-04-10 A | 2014-06-06 |  | 18% | 2d | finish no earlier than 2014-06-06 |
| 65 |  | How to develop a caGrid 2.0 analytical service | 25d | 2014-06-09 | 2014-07-11 | 64 |  | 2d |  |
| 66 |  | How to Develop a Secure caGrid 2.1 Service (Cookbook) | 25d | 2014-07-14 | 2014-08-15 | 65 |  | 2d | finish no earlier than 2014-07-31 |
| 67 |  | How to upgrade caGrid 1.4 analytical service to caGrid 2.0 analytical service | 30d | 2014-08-18 | 2014-09-26 | 66 |  | 2d |  |
| 68 | 5.4 | **Documentation** | 121d | 2014-03-10 A | 2014-08-25 |  | 18% | 26d |  |
| 69 |  | Requirements Document | 5d | 2014-03-10 A | 2014-03-14 A |  | 100% |  | start no earlier than 2014-03-10 |
| 70 |  | Review requirements | 5d | 2014-03-17 | 2014-03-21 | 69 |  | 137d |  |

| ID | WBS | Task | Duration | Start | Finish | Predecessors | Complete | Total float | Constraint |
| --- | --- | --- | --- | --- | --- | --- | --- | --- | --- |
| 71 |  | QA/System Installation/Upgrade Guide | 25d | 2014-06-17 | 2014-07-21 |  |  | -30.06d | start no earlier than 2014-06-17 |
| 72 | 5.4.4 | **Developer Guides** | 14d | 2014-06-04 | 2014-06-23 |  |  | 71d |  |
| 73 |  | Authentication Service | 14d | 2014-06-04 | 2014-06-23 | 61 |  | 71d | finish no earlier than 2013-08-20 |
| 74 | 5.4.5 | **Administrator Guides** | 105d | 2014-04-01 A | 2014-08-25 | 71 | 23% | 26d |  |
| 75 |  | Dorian | 10d | 2014-07-22 | 2014-08-04 |  |  | 41d | finish no earlier than 2014-08-04 |
| 76 |  | Grid Trust Service (GTS) | 11d | 2014-08-04 | 2014-08-18 |  |  | 26d | finish no earlier than 2014-08-18 |
| 77 |  | Grid Grouper | 5d | 2014-08-19 | 2014-08-25 | 76 |  | 26d | start no earlier than 2014-08-19 |
| 78 |  | Credential Delegation Service (CDS) | 5d | 2014-07-22 | 2014-07-28 |  |  | 31d | finish no earlier than 2014-07-28 |
| 79 |  | Global Model Exchange (GME) | 5d | 2014-07-29 | 2014-08-04 | 78 |  | 31d | finish no earlier than 2014-08-04 |
| 80 |  | Index Service | 10d | 2014-08-05 | 2014-08-18 | 79 |  | 31d | start no earlier than 2014-08-05 |
| 81 |  | Authentication Service | 10d | 2014-07-22 | 2014-08-04 |  |  | 41d | finish no earlier than 2014-08-04 |
| 82 |  | MMS Service | 19d | 2014-04-01 A | 2014-04-25 | 58 | 90% |  | finish no earlier than 2014-04-25 |
| 83 | 5.5 | **Deployment** | 43d | 2014-07-22 | 2014-09-18 |  |  | 7d |  |
| 84 |  | Architecture Review Checklist | 4d | 2014-07-22 | 2014-07-25 | 71 |  | 9d |  |
| 85 |  | Deployment to NCI QA | 1w | 2014-07-22 | 2014-07-28 | 71 |  | 7d |  |
| 86 |  | Supporting QA Team | 2w | 2014-07-22 | 2014-08-04 | 71 |  | 41d |  |
| 87 | 5.5.4 | **QA Testing** | 25d | 2014-07-29 | 2014-09-01 |  |  | 7d |  |
| 88 |  | Iteration 1 | 10d | 2014-07-29 | 2014-08-11 | 85 |  | 7d |  |
| 89 |  | QA AppScan for iteration#1 | 5d | 2014-08-12 | 2014-08-18 | 88 |  | 7d |  |
| 90 |  | Iteration 2 | 6d | 2014-08-19 | 2014-08-26 | 89 |  | 7d |  |
| 91 |  | QA AppScan for iteration#2 | 4d | 2014-08-27 | 2014-09-01 | 90 |  | 7d |  |
| 92 | 5.5.5 | **Training Grid** | 7d | 2014-08-18 | 2014-08-27 |  |  | 24d |  |
| 93 | 5.5.5.1 | **Iteration 1** | 7d | 2014-08-18 | 2014-08-27 |  |  | 24d |  |
| 94 |  | Start | 0d | 2014-08-18 | 2014-08-18 | 89 |  | 24d |  |
| 95 |  | Dorian | 1d | 2014-08-19 | 2014-08-19 | 94 |  | 24d |  |
| 96 |  | Master GTS | 1d | 2014-08-20 | 2014-08-20 | 95 |  | 24d |  |
| 97 |  | Slave GTS | 1d | 2014-08-21 | 2014-08-21 | 96 |  | 24d |  |
| 98 |  | Index | 1d | 2014-08-22 | 2014-08-22 | 97 |  | 24d |  |
| 99 |  | Grid Grouper | 1d | 2014-08-25 | 2014-08-25 | 98 |  | 24d |  |
| 100 |  | MMS | 1d | 2014-08-26 | 2014-08-26 | 99 |  | 24d |  |
| 101 |  | GME | 1d | 2014-08-27 | 2014-08-27 | 100 |  | 24d |  |
| 102 |  | End | 0d | 2014-08-27 | 2014-08-27 | 94, 95, 96, 97, 98, 99, 100, 101 |  | 24d |  |
| 103 |  | Deployment to NCI Stage | 5d | 2014-09-02 | 2014-09-08 | 91 |  | 7d |  |
| 104 |  | Stage App Scan | 3d | 2014-09-09 | 2014-09-11 | 103 |  | 7d |  |
| 105 |  | Deployment to NCI Production | 5d | 2014-09-12 | 2014-09-18 | 104 |  | 7d |  |
| 106 |  | Deployment Support | 38d | 2014-07-28 | 2014-09-17 | 84 |  | 9d | finish no earlier than 2014-07-02 |
| 107 |  | Release Support | 1d | 2014-09-19 | 2014-09-19 | 105 |  | 7d |  |
| 108 |  | End | 0h | 2014-09-19 | 2014-09-19 | 107 |  | 7d |  |
| 109 | 6 | **caGrid Portal** | 126d | 2014-02-03 A | 2014-07-28 |  | 31% | 46d |  |
| 110 |  | Start | 0d | 2014-02-03 | 2014-02-03 |  |  | 172d | start no earlier than 2014-02-03 |
| 111 | 6.2 | **Portal Development** | 75d | 2014-03-03 A | 2014-06-13 |  | 74% | 77d |  |
| 112 |  | Start | 0d | 2014-03-03 | 2014-03-03 |  |  | 152d | start no earlier than 2014-03-03 |
| 113 |  | Requirements Document | 10d | 2014-03-03 A | 2014-03-14 A | 112 | 100% |  |  |
| 114 |  | Review requirements | 5d | 2014-04-21 A | 2014-04-25 A | 113 | 100% |  |  |
| 115 |  | caGrid Portal Framework setup | 10d | 2014-04-28 A | 2014-05-09 A | 114 | 100% |  |  |
| 116 |  | Account Registration/Management | 20d | 2014-05-12 A | 2014-06-06 | 115 | 60% | 46d |  |
| 117 |  | Unit Testing | 5d | 2014-06-09 | 2014-06-13 | 116 |  | 46d |  |
| 118 |  | End | 0d | 2014-06-13 | 2014-06-13 | 117 |  | 46d |  |
| 119 | 6.3 | **Documentation** | 5d | 2014-06-16 | 2014-06-20 |  |  | 72d |  |
| 120 |  | User Guide | 5d | 2014-06-16 | 2014-06-20 | 118 |  | 72d |  |
| 121 | 6.4 | **Deployment** | 31d | 2014-06-16 | 2014-07-28 |  |  | 46d |  |
| 122 |  | Architecture Review Checklist | 1d | 2014-06-16 | 2014-06-16 | 118 |  | 46d |  |
| 123 |  | Deployment to NCI QA | 5d | 2014-06-17 | 2014-06-23 | 122 |  | 47d |  |
| 124 |  | Supporting QA Team | 5d | 2014-06-17 | 2014-06-23 | 122 |  | 71d |  |
| 125 | 6.4.4 | **QA Testing** | 3d | 2014-06-24 | 2014-06-26 |  |  | 47d |  |
| 126 |  | Iteration 1 | 3d | 2014-06-24 | 2014-06-26 | 123 |  | 47d |  |
| 127 |  | QA App Scan | 5d | 2014-06-27 | 2014-07-03 | 126 |  | 47d |  |
| 128 |  | Deployment to NCI Stage | 5d | 2014-07-04 | 2014-07-10 | 127 |  | 47d |  |
| 129 |  | Stage App Scan | 5d | 2014-07-11 | 2014-07-17 | 128 |  | 47d |  |
| 130 |  | Deployment to NCI Production | 5d | 2014-07-18 | 2014-07-24 | 129 |  | 47d |  |
| 131 |  | Deployment Support | 30d | 2014-06-17 | 2014-07-28 | 122 |  | 46d | start no earlier than 2014-02-26 |
| 132 |  | Release Support | 1d | 2014-07-25 | 2014-07-25 | 130 |  | 47d |  |
| 133 |  | End | 0d | 2014-07-25 | 2014-07-25 | 132 |  | 47d |  |
| 134 |  | End | 0d | 2014-09-30 | 2014-09-30 |  |  | 1d | start no earlier than 2014-09-30 |

## Version 2 (saved 2014-07-07)

Note of the change: Project schedule changes

Last finish stays 2014-09-30. Complete tasks 33 → 35.

Added:

| ID | Task | Duration | Start | Finish | Predecessors | Constraint | Resources |
| --- | --- | --- | --- | --- | --- | --- | --- |
| 71 | caGrid 1.x to 2.x Implementation guide | 5d | 2014-08-19 | 2014-08-25 | 89 |  | Scott Oster |
| 73 | Dorian | 10d | 2014-06-16 | 2014-06-27 |  | start no earlier than 2014-06-16 | Stephen Langella |
| 74 | Grid Trust Service (GTS) | 10d | 2014-06-16 A | 2014-06-27 A |  | finish no earlier than 2014-06-27 | Stephen Langella |
| 75 | Grid Grouper | 10d | 2014-06-30 | 2014-07-11 | 74 | start no earlier than 2014-06-30 | Stephen Langella |
| 76 | Credential Delegation Service (CDS) | 10d | 2014-06-30 | 2014-07-11 | 74 | finish no earlier than 2014-07-11 | Scott Oster |
| 77 | Authentication Service | 10d | 2014-06-30 | 2014-07-11 | 74 | finish no earlier than 2014-07-11 | Prasad Konka |
| 78 | Global Model Exchange (GME) | 5d | 2014-07-14 | 2014-07-18 | 77 | start no earlier than 2014-07-14 | Scott Oster |
| 79 | Index Service | 5d | 2014-07-14 | 2014-07-18 | 77 | start no earlier than 2014-07-14 | Scott Oster |
| 80 | MMS Service | 5d | 2014-07-14 | 2014-07-18 | 77 | start no earlier than 2014-07-14 | Shannon Hastings |
| 96 | Milestone 1: QA 2.0.6 services in new tech stack (Java 1.7 with 64 bit) - exploratory testing | 10d | 2014-06-23 | 2014-07-04 | 45 | start no earlier than 2014-06-23 | QA |
| 100 | Milestone 5: Integration Testing | 5d | 2014-08-04 | 2014-08-08 | 99 |  | QA |

Removed: 85 Deployment to NCI QA

Changed:

| ID | Task | Start | Finish | Duration | Complete | Total float | Predecessors | Other |
| --- | --- | --- | --- | --- | --- | --- | --- | --- |
| 53 | **caGrid 2.1** |  |  |  | 37% → 39% |  |  |  |
| 55 | **Service Development** |  |  |  | 82% → 93% |  |  |  |
| 59 | Index Service |  |  |  | 40% → 75% |  |  |  |
| 60 | Authentication Service |  |  |  | 70% → 90% |  |  |  |
| 65 | How to develop a caGrid 2.X analytical service |  |  |  |  |  |  | was named How to develop a caGrid 2.0 analytical service |
| 66 | How to Develop a Secure caGrid 2.X Service (Cookbook) |  |  |  |  |  |  | was named How to Develop a Secure caGrid 2.1 Service (Cookbook) |
| 67 | How to upgrade caGrid 1.4 analytical service to caGrid 2.X analytical service |  |  |  |  |  |  | was named How to upgrade caGrid 1.4 analytical service to caGrid 2.0 analytical service |
| 68 | **Documentation** |  |  |  | 18% → 20% |  |  |  |
| 72 | **Upgrade Guide** | 2014-06-17 → 2014-06-16 A (-1d) | 2014-07-21 → 2014-07-18 (-3d) |  | 0% → 15% | -30.06d → 0d |  | was named QA/System Installation/Upgrade Guide; constraint start no earlier than 2014-06-17 → none |
| 83 | **Administrator Guides** |  |  |  | 23% → 25% |  |  |  |
| 90 | Authentication Service |  |  |  |  |  |  | resources Shannon Hastings → Prasad Konka |
| 91 | MMS Service |  | 2014-04-25 A |  | 90% → 100% |  |  |  |
| 92 | **Deployment** | 2014-07-22 → 2014-06-23 (-29d) | 2014-09-18 → 2014-09-16 (-2d) | 43d → 62d |  | 7d → 10d |  |  |
| 93 | Architecture Review Checklist | 2014-07-22 → 2014-07-21 (-1d) | 2014-07-25 → 2014-07-24 (-1d) |  |  | 9d → 10d |  |  |
| 94 | Supporting QA Team | 2014-07-22 → 2014-07-21 (-1d) | 2014-08-04 → 2014-08-01 (-3d) |  |  | 41d → 42d |  | resources Stephen Langella; Scott Oster → Stephen Langella; Scott Oster; Shannon Hastings |
| 95 | **QA Testing** | 2014-07-29 → 2014-06-23 (-36d) | 2014-09-01 → 2014-08-14 (-18d) | 25d → 39d |  | 7d → 19d |  |  |
| 97 | Milestone 2: QA 2.1 GTS and Dorian service in new tech stack | 2014-07-29 → 2014-07-07 (-22d) | 2014-08-11 → 2014-07-18 (-24d) |  |  | 7d → 19d | Deployment to NCI QA → 73, 74, 96 | was named Iteration 1 |
| 98 | Milestone 3: QA 2.1 Authentication, CDS and Grid Grouper service in new tech stack | 2014-08-12 → 2014-07-21 (-22d) | 2014-08-18 → 2014-07-25 (-24d) |  |  | 7d → 19d | 97 → 75, 76, 77, 97 | was named QA AppScan for iteration#1; resources Security Team → QA |
| 99 | Milestone 4: QA 2.1 GME/MMS/Index services in new tech stack | 2014-08-19 → 2014-07-28 (-22d) | 2014-08-26 → 2014-08-01 (-25d) | 6d → 5d |  | 7d → 19d | 98 → 78, 79, 80, 98 | was named Iteration 2 |
| 101 | QA AppScan for all 2.1 services | 2014-08-27 → 2014-08-11 (-16d) | 2014-09-01 → 2014-08-14 (-18d) |  |  | 7d → 19d | 99 → 100 | was named QA AppScan for iteration#2 |
| 102 | **Training Grid** | 2014-08-18 → 2014-07-25 (-24d) | 2014-08-27 → 2014-08-05 (-22d) |  |  | 24d → 40d |  |  |
| 103 | **Iteration 1** | 2014-08-18 → 2014-07-25 (-24d) | 2014-08-27 → 2014-08-05 (-22d) |  |  | 24d → 40d |  |  |
| 104 | Start | 2014-08-18 → 2014-07-25 (-24d) | 2014-08-18 → 2014-07-25 (-24d) |  |  | 24d → 40d |  |  |
| 105 | Dorian | 2014-08-19 → 2014-07-28 (-22d) | 2014-08-19 → 2014-07-28 (-22d) |  |  | 24d → 40d |  |  |
| 106 | Master GTS | 2014-08-20 → 2014-07-29 (-22d) | 2014-08-20 → 2014-07-29 (-22d) |  |  | 24d → 40d |  |  |
| 107 | Slave GTS | 2014-08-21 → 2014-07-30 (-22d) | 2014-08-21 → 2014-07-30 (-22d) |  |  | 24d → 40d |  |  |
| 108 | Index | 2014-08-22 → 2014-07-31 (-22d) | 2014-08-22 → 2014-07-31 (-22d) |  |  | 24d → 40d |  |  |
| 109 | Grid Grouper | 2014-08-25 → 2014-08-01 (-24d) | 2014-08-25 → 2014-08-01 (-24d) |  |  | 24d → 40d |  |  |
| 110 | MMS | 2014-08-26 → 2014-08-04 (-22d) | 2014-08-26 → 2014-08-04 (-22d) |  |  | 24d → 40d |  |  |
| 111 | GME | 2014-08-27 → 2014-08-05 (-22d) | 2014-08-27 → 2014-08-05 (-22d) |  |  | 24d → 40d |  |  |
| 112 | End | 2014-08-27 → 2014-08-05 (-22d) | 2014-08-27 → 2014-08-05 (-22d) |  |  | 24d → 40d |  |  |
| 113 | Deployment to NCI Stage | 2014-09-02 → 2014-08-15 (-18d) | 2014-09-08 → 2014-08-21 (-18d) |  |  | 7d → 19d |  |  |
| 114 | Stage App Scan | 2014-09-09 → 2014-08-22 (-18d) | 2014-09-11 → 2014-08-26 (-16d) |  |  | 7d → 19d |  |  |
| 115 | Deployment to NCI Production | 2014-09-12 → 2014-08-27 (-16d) | 2014-09-18 → 2014-09-02 (-16d) |  |  | 7d → 19d |  |  |
| 116 | Deployment Support | 2014-07-28 → 2014-07-25 (-3d) | 2014-09-17 → 2014-09-16 (-1d) |  |  | 9d → 10d |  |  |
| 117 | Release Support | 2014-09-19 → 2014-09-03 (-16d) | 2014-09-19 → 2014-09-03 (-16d) |  |  | 7d → 19d |  |  |
| 118 | End | 2014-09-19 → 2014-09-03 (-16d) | 2014-09-19 → 2014-09-03 (-16d) |  |  | 7d → 19d |  |  |
